# Virtualni popotnik

Schedule from MS Project, 2015-03-16 to 2015-03-16, costs in €.

## Calendars

- Standard: Mon-Fri 08:00-12:00, 13:00-17:00; Sat-Sun off.

## Resources

| Resource | Rate |
| --- | --- |
| Vodja projekta | 12 |
| Tajnica | 5.5 |
| Vzdrževalec | 7 |
| Vodja delovne skupine 1 | 10 |
| Vodja delovne skupine 2 | 10 |
| Vodja delovne skupine 3 | 10 |
| Vodja delovne skupine 4 | 10 |
| Načrtovalec 1 | 8.5 |
| Načrtovalec 2 | 8.5 |
| Načrtovalec sistema | 8.5 |
| Načrtovalec 3 | 8.5 |
| Grafični oblikovalec 1 | 9 |
| Grafični oblikovalec 2 | 9 |
| Grafični oblikovalec 3 | 9 |
| Programer 1 | 8 |
| Programer 2 | 8 |
| Programer 3 | 8 |
| Programer 4 | 8 |
| Programer 5 | 8 |
| Programer 6 | 8 |
| Programer 7 | 8 |
| Programer 8 | 8 |
| Programer 9 | 8 |
| Programer 10 | 8 |
| Tester 1 | 7.5 |
| Tester 2 | 7.5 |
| Tester 3 | 7.5 |
| Tester 4 | 7.5 |
| Tester 5 | 7.5 |
| Tester 6 | 7.5 |
| Oblikovalec podatkovne baze | 9 |
| Mehatronik 1 | 8 |
| Mehatronik 2 | 8 |
| Elektronik 1 | 9.2 |
| Elektronik 2 | 9.2 |
| Daljinski upravljalnik | 300 |
| Paket senzorjev | 150 |
| 360° kamera | 300 |
| Delovna postaja | 1200 |
| Strežnik | 1800 |
| Brezpilotno zračno plovilo | 1500 |
| Pisarniški material | 200 |
| Tehnični material | 50 |
| Zakuska | 200 |

## Schedule

| ID | WBS | Task | Type | Duration | Start | Finish | Total slack | Resources | Work | Cost |
| --- | --- | --- | --- | --- | --- | --- | --- | --- | --- | --- |
| 1 | 1 | Začetni sestanek s stranko |  | 2h | 2015-03-16 | 2015-03-16 | 0.75d | Vodja projekta; Tajnica | 4h | 35 |
| 2 | 2 | Interni sestanek | manual | 1d? | 2015-03-16 | 2015-03-16 |  |  |  |  |
| 3 | 3 | Priprava pogodbe | manual | 1d? | 2015-03-16 | 2015-03-16 |  |  |  |  |
| 4 | 4 | Podpis pogodbe |  | 1h | 2015-03-16 | 2015-03-16 | 0.88d | Vodja projekta | 1h | 12 |
| 5 | 5 | **Priprava zahtev** |  | 1d? | 2015-03-16 | 2015-03-16 | 0d |  |  |  |
| 6 | 5.1 | Zajem zahtev | manual | 1d? | 2015-03-16 | 2015-03-16 |  |  |  |  |
| 7 | 5.2 | Analiza zahtev | manual | 1d? | 2015-03-16 | 2015-03-16 |  |  |  |  |
| 8 | 5.3 | Izdelava specifikacij | manual | 1d? | 2015-03-16 | 2015-03-16 |  |  |  |  |
| 9 | 5.4 | Sestanek s stranko, usklajevanje specifikacij | manual | 1d? | 2015-03-16 | 2015-03-16 |  |  |  |  |
| 10 | 5.5 | Potrditev zahtev | manual | 1d? | 2015-03-16 | 2015-03-16 |  |  |  |  |
| 11 | 6 | **Priprava delovnega okolja** |  | 1d? | 2015-03-16 | 2015-03-16 | 0d |  |  |  |
| 12 | 6.1 | Namestitev strežnika | manual | 1d? | 2015-03-16 | 2015-03-16 |  |  |  |  |
| 13 | 6.2 | Priprava "delavnice" za brezpilotna zračna plovila | manual | 1d? | 2015-03-16 | 2015-03-16 |  |  |  |  |
| 14 | 6.3 | Namestitev delovnih postaj | manual | 1d? | 2015-03-16 | 2015-03-16 |  |  |  |  |
| 15 | 7 | **Razvoj** |  | 1d? | 2015-03-16 | 2015-03-16 | 0d |  |  |  |
| 16 | 7.1 | Spletna aplikacija | manual | 1d? | 2015-03-16 | 2015-03-16 |  |  |  |  |
| 17 | 7.2 | Inteligentni sistem | manual | 1d? | 2015-03-16 | 2015-03-16 |  |  |  |  |
| 18 | 7.3 | Modifikacija brezpilotna zračna plovila | manual | 1d? | 2015-03-16 | 2015-03-16 |  |  |  |  |
| 19 | 7.4 | Mobilna aplikacija | manual | 1d? | 2015-03-16 | 2015-03-16 |  |  |  |  |
| 20 | 8 | **Testiranje** |  | 1d? | 2015-03-16 | 2015-03-16 | 0d |  |  |  |
| 21 | 8.1 | **Spletna aplikacija** |  | 1d? | 2015-03-16 | 2015-03-16 | 0d |  |  |  |
| 22 | 8.1.1 | Priprava načrta | manual | 1d? | 2015-03-16 | 2015-03-16 |  |  |  |  |
| 23 | 8.1.2 | Priprava testnih primerov | manual | 1d? | 2015-03-16 | 2015-03-16 |  |  |  |  |
| 24 | 8.1.3 | Testiranje | manual | 1d? | 2015-03-16 | 2015-03-16 |  |  |  |  |
| 25 | 8.1.4 | Poročilo | manual | 1d? | 2015-03-16 | 2015-03-16 |  |  |  |  |

| ID | WBS | Task | Type | Duration | Start | Finish | Total slack |
| --- | --- | --- | --- | --- | --- | --- | --- |
| 26 | 8.2 | **Inteligentni sistem** |  | 1d? | 2015-03-16 | 2015-03-16 | 0d |
| 27 | 8.2.1 | Priprava načrta | manual | 1d? | 2015-03-16 | 2015-03-16 |  |
| 28 | 8.2.2 | Priprava testnih primerov | manual | 1d? | 2015-03-16 | 2015-03-16 |  |
| 29 | 8.2.3 | Testiranje | manual | 1d? | 2015-03-16 | 2015-03-16 |  |
| 30 | 8.2.4 | Poročilo | manual | 1d? | 2015-03-16 | 2015-03-16 |  |
| 31 | 8.3 | **Modifikacija brezpilotna zračna plovila** |  | 1d? | 2015-03-16 | 2015-03-16 | 0d |
| 32 | 8.3.1 | Priprava načrta | manual | 1d? | 2015-03-16 | 2015-03-16 |  |
| 33 | 8.3.2 | Priprava testnih primerov | manual | 1d? | 2015-03-16 | 2015-03-16 |  |
| 34 | 8.3.3 | Testiranje | manual | 1d? | 2015-03-16 | 2015-03-16 |  |
| 35 | 8.3.4 | Poročilo | manual | 1d? | 2015-03-16 | 2015-03-16 |  |
| 36 | 8.4 | **Mobilna aplikacija** |  | 1d? | 2015-03-16 | 2015-03-16 | 0d |
| 37 | 8.4.1 | Priprava načrta | manual | 1d? | 2015-03-16 | 2015-03-16 |  |
| 38 | 8.4.2 | Priprava testnih primerov | manual | 1d? | 2015-03-16 | 2015-03-16 |  |
| 39 | 8.4.3 | Testiranje | manual | 1d? | 2015-03-16 | 2015-03-16 |  |
| 40 | 8.4.4 | Poročilo | manual | 1d? | 2015-03-16 | 2015-03-16 |  |
| 41 | 9 | Izobraževanje | manual | 1d? | 2015-03-16 | 2015-03-16 |  |
| 42 | 10 | Implementacija | manual | 1d? | 2015-03-16 | 2015-03-16 |  |
